# Airfield Apron Reconstruction, Phased

How a schedule from Primavera P6 changed from version to version. A marks actual dates.

## Version 1 (data date 2027-03-01, saved 2026-11-17)

| ID | WBS | Task | Duration | Start | Finish | Predecessors | Total float |
| --- | --- | --- | --- | --- | --- | --- | --- |
|  | 01 | **Milestones** |  | 2027-03-01 | 2028-03-08 |  |  |
| MS000 |  | Notice to Proceed | 0d | 2027-03-01 | 2027-03-01 |  | 0d |
| MS999 |  | Apron reconstruction complete | 0d | 2028-03-08 | 2028-03-08 | P6O | 0d |
|  | 02 | **Approvals** |  | 2027-03-01 | 2027-04-23 |  |  |
| EN100 |  | Phasing plan, safety plan & airfield approvals | 25d | 2027-03-01 | 2027-04-02 | MS000 | 0d |
| EN110 |  | Concrete mix design & test strip | 15d | 2027-04-05 | 2027-04-23 | EN100 | 0d |
|  | 03 | **Phase 1** |  | 2027-04-26 | 2027-06-16 |  |  |
| P1C |  | Phase 1: relocate aircraft, close & barricade area | 2d | 2027-04-26 | 2027-04-27 | EN110 | 0d |
| P1D |  | Phase 1: break out & remove old pavement | 8d | 2027-04-28 | 2027-05-07 | P1C | 0d |
| P1S |  | Phase 1: subgrade repair & cement-treated base | 8d | 2027-05-10 | 2027-05-19 | P1D | 0d |
| P1P |  | Phase 1: slip-form concrete paving (6 lanes) | 9d | 2027-05-20 | 2027-06-01 | P1S | 0d |
| P1J |  | Phase 1: cure, saw-cut & seal joints | 7d | 2027-06-02 | 2027-06-10 | P1P | 0d |
| P1M |  | Phase 1: markings & lighting | 3d | 2027-06-11 | 2027-06-15 | P1J | 0d |
| P1O |  | Phase 1: inspection, reopen & return aircraft | 1d | 2027-06-16 | 2027-06-16 | P1M | 0d |
|  | 04 | **Phase 2** |  | 2027-06-17 | 2027-08-09 |  |  |
| P2C |  | Phase 2: relocate aircraft, close & barricade area | 2d | 2027-06-17 | 2027-06-18 | P1O | 0d |
| P2D |  | Phase 2: break out & remove old pavement | 8d | 2027-06-21 | 2027-06-30 | P2C | 0d |
| P2S |  | Phase 2: subgrade repair & cement-treated base | 8d | 2027-07-01 | 2027-07-12 | P2D | 0d |
| P2P |  | Phase 2: slip-form concrete paving (6 lanes) | 9d | 2027-07-13 | 2027-07-23 | P2S | 0d |
| P2J |  | Phase 2: cure, saw-cut & seal joints | 7d | 2027-07-26 | 2027-08-03 | P2P | 0d |
| P2M |  | Phase 2: markings & lighting | 3d | 2027-08-04 | 2027-08-06 | P2J | 0d |
| P2O |  | Phase 2: inspection, reopen & return aircraft | 1d | 2027-08-09 | 2027-08-09 | P2M | 0d |
|  | 05 | **Phase 3** |  | 2027-08-10 | 2027-09-30 |  |  |
| P3C |  | Phase 3: relocate aircraft, close & barricade area | 2d | 2027-08-10 | 2027-08-11 | P2O | 0d |
| P3D |  | Phase 3: break out & remove old pavement | 8d | 2027-08-12 | 2027-08-23 | P3C | 0d |
| P3S |  | Phase 3: subgrade repair & cement-treated base | 8d | 2027-08-24 | 2027-09-02 | P3D | 0d |
| P3P |  | Phase 3: slip-form concrete paving (6 lanes) | 9d | 2027-09-03 | 2027-09-15 | P3S | 0d |
| P3J |  | Phase 3: cure, saw-cut & seal joints | 7d | 2027-09-16 | 2027-09-24 | P3P | 0d |
| P3M |  | Phase 3: markings & lighting | 3d | 2027-09-27 | 2027-09-29 | P3J | 0d |
| P3O |  | Phase 3: inspection, reopen & return aircraft | 1d | 2027-09-30 | 2027-09-30 | P3M | 0d |
|  | 06 | **Phase 4** |  | 2027-10-01 | 2027-11-23 |  |  |
| P4C |  | Phase 4: relocate aircraft, close & barricade area | 2d | 2027-10-01 | 2027-10-04 | P3O | 0d |
| P4D |  | Phase 4: break out & remove old pavement | 8d | 2027-10-05 | 2027-10-14 | P4C | 0d |
| P4S |  | Phase 4: subgrade repair & cement-treated base | 8d | 2027-10-15 | 2027-10-26 | P4D | 0d |
| P4P |  | Phase 4: slip-form concrete paving (6 lanes) | 9d | 2027-10-27 | 2027-11-08 | P4S | 0d |
| P4J |  | Phase 4: cure, saw-cut & seal joints | 7d | 2027-11-09 | 2027-11-17 | P4P | 0d |
| P4M |  | Phase 4: markings & lighting | 3d | 2027-11-18 | 2027-11-22 | P4J | 0d |
| P4O |  | Phase 4: inspection, reopen & return aircraft | 1d | 2027-11-23 | 2027-11-23 | P4M | 0d |
|  | 07 | **Phase 5** |  | 2027-11-24 | 2028-01-14 |  |  |
| P5C |  | Phase 5: relocate aircraft, close & barricade area | 2d | 2027-11-24 | 2027-11-25 | P4O | 0d |
| P5D |  | Phase 5: break out & remove old pavement | 8d | 2027-11-26 | 2027-12-07 | P5C | 0d |
| P5S |  | Phase 5: subgrade repair & cement-treated base | 8d | 2027-12-08 | 2027-12-17 | P5D | 0d |
| P5P |  | Phase 5: slip-form concrete paving (6 lanes) | 9d | 2027-12-20 | 2027-12-30 | P5S | 0d |
| P5J |  | Phase 5: cure, saw-cut & seal joints | 7d | 2027-12-31 | 2028-01-10 | P5P | 0d |
| P5M |  | Phase 5: markings & lighting | 3d | 2028-01-11 | 2028-01-13 | P5J | 0d |
| P5O |  | Phase 5: inspection, reopen & return aircraft | 1d | 2028-01-14 | 2028-01-14 | P5M | 0d |
|  | 08 | **Phase 6** |  | 2028-01-17 | 2028-03-08 |  |  |
| P6C |  | Phase 6: relocate aircraft, close & barricade area | 2d | 2028-01-17 | 2028-01-18 | P5O | 0d |
| P6D |  | Phase 6: break out & remove old pavement | 8d | 2028-01-19 | 2028-01-28 | P6C | 0d |
| P6S |  | Phase 6: subgrade repair & cement-treated base | 8d | 2028-01-31 | 2028-02-09 | P6D | 0d |
| P6P |  | Phase 6: slip-form concrete paving (6 lanes) | 9d | 2028-02-10 | 2028-02-22 | P6S | 0d |
| P6J |  | Phase 6: cure, saw-cut & seal joints | 7d | 2028-02-23 | 2028-03-02 | P6P | 0d |
| P6M |  | Phase 6: markings & lighting | 3d | 2028-03-03 | 2028-03-07 | P6J | 0d |
| P6O |  | Phase 6: inspection, reopen & return aircraft | 1d | 2028-03-08 | 2028-03-08 | P6M | 0d |

## Version 2 (data date 2027-03-01, saved 2026-11-17)

Last finish 2028-03-08 → 2028-01-13 (-55d).

Added:

| ID | Task | Duration | Start | Finish | Predecessors |
| --- | --- | --- | --- | --- | --- |
| P1B | Phase 1: place lighted barricades | 1d | 2027-04-17 | 2027-04-17 | P1C |
| P1X | Phase 1: remove barricades | 1d | 2027-05-29 | 2027-05-29 | P1M |
| P2B | Phase 2: place lighted barricades | 1d | 2027-06-02 | 2027-06-02 | P2C |
| P2X | Phase 2: remove barricades | 1d | 2027-07-14 | 2027-07-14 | P2M |
| P3B | Phase 3: place lighted barricades | 1d | 2027-07-17 | 2027-07-17 | P3C |
| P3X | Phase 3: remove barricades | 1d | 2027-08-28 | 2027-08-28 | P3M |
| P4B | Phase 4: place lighted barricades | 1d | 2027-09-01 | 2027-09-01 | P4C |
| P4X | Phase 4: remove barricades | 1d | 2027-10-13 | 2027-10-13 | P4M |
| P5B | Phase 5: place lighted barricades | 1d | 2027-10-16 | 2027-10-16 | P5C |
| P5X | Phase 5: remove barricades | 1d | 2027-11-27 | 2027-11-27 | P5M |
| P6B | Phase 6: place lighted barricades | 1d | 2027-12-01 | 2027-12-01 | P6C |
| P6X | Phase 6: remove barricades | 1d | 2028-01-12 | 2028-01-12 | P6M |

Changed:

| ID | Task | Start | Finish | Duration | Predecessors | Other |
| --- | --- | --- | --- | --- | --- | --- |
| 01 | **Milestones** |  | 2028-03-08 → 2028-01-13 (-55d) |  |  |  |
| MS999 | Apron reconstruction complete | 2028-03-08 → 2028-01-13 (-55d) | 2028-03-08 → 2028-01-13 (-55d) |  |  |  |
| 02 | **Approvals** |  | 2027-04-23 → 2027-04-15 (-8d) |  |  |  |
| EN100 | Phasing plan, safety plan & airfield approvals |  | 2027-04-02 → 2027-03-29 (-4d) |  |  |  |
| EN110 | Concrete mix design & test strip | 2027-04-05 → 2027-03-30 (-6d) | 2027-04-23 → 2027-04-15 (-8d) |  |  |  |
| 03 | **Phase 1** | 2027-04-26 → 2027-04-16 (-10d) | 2027-06-16 → 2027-05-31 (-16d) |  |  |  |
| P1C | Phase 1: relocate aircraft from stand 1 | 2027-04-26 → 2027-04-16 (-10d) | 2027-04-27 → 2027-04-16 (-11d) | 2d → 1d |  | was named Phase 1: relocate aircraft, close & barricade area |
| P1D | Phase 1: break out & remove old pavement | 2027-04-28 → 2027-04-19 (-9d) | 2027-05-07 → 2027-04-27 (-10d) |  | P1C → P1B |  |
| P1S | Phase 1: subgrade repair & cement-treated base | 2027-05-10 → 2027-04-28 (-12d) | 2027-05-19 → 2027-05-06 (-13d) |  |  |  |
| P1P | Phase 1: slip-form concrete paving (6 lanes) | 2027-05-20 → 2027-05-07 (-13d) | 2027-06-01 → 2027-05-17 (-15d) |  |  |  |
| P1J | Phase 1: cure, saw-cut & seal joints | 2027-06-02 → 2027-05-18 (-15d) | 2027-06-10 → 2027-05-25 (-16d) |  |  |  |
| P1M | Phase 1: markings & lighting | 2027-06-11 → 2027-05-26 (-16d) | 2027-06-15 → 2027-05-28 (-18d) |  |  |  |
| P1O | Phase 1: inspection, reopen & return aircraft | 2027-06-16 → 2027-05-31 (-16d) | 2027-06-16 → 2027-05-31 (-16d) |  | P1M → P1X |  |
| 04 | **Phase 2** | 2027-06-17 → 2027-06-01 (-16d) | 2027-08-09 → 2027-07-15 (-25d) |  |  |  |
| P2C | Phase 2: relocate aircraft from stand 2 | 2027-06-17 → 2027-06-01 (-16d) | 2027-06-18 → 2027-06-01 (-17d) | 2d → 1d |  | was named Phase 2: relocate aircraft, close & barricade area |
| P2D | Phase 2: break out & remove old pavement | 2027-06-21 → 2027-06-03 (-18d) | 2027-06-30 → 2027-06-11 (-19d) |  | P2C → P2B |  |
| P2S | Phase 2: subgrade repair & cement-treated base | 2027-07-01 → 2027-06-12 (-19d) | 2027-07-12 → 2027-06-21 (-21d) |  |  |  |
| P2P | Phase 2: slip-form concrete paving (6 lanes) | 2027-07-13 → 2027-06-22 (-21d) | 2027-07-23 → 2027-07-01 (-22d) |  |  |  |
| P2J | Phase 2: cure, saw-cut & seal joints | 2027-07-26 → 2027-07-02 (-24d) | 2027-08-03 → 2027-07-09 (-25d) |  |  |  |
| P2M | Phase 2: markings & lighting | 2027-08-04 → 2027-07-10 (-25d) | 2027-08-06 → 2027-07-13 (-24d) |  |  |  |
| P2O | Phase 2: inspection, reopen & return aircraft | 2027-08-09 → 2027-07-15 (-25d) | 2027-08-09 → 2027-07-15 (-25d) |  | P2M → P2X |  |
| 05 | **Phase 3** | 2027-08-10 → 2027-07-16 (-25d) | 2027-09-30 → 2027-08-30 (-31d) |  |  |  |
| P3C | Phase 3: relocate aircraft from stand 3 | 2027-08-10 → 2027-07-16 (-25d) | 2027-08-11 → 2027-07-16 (-26d) | 2d → 1d |  | was named Phase 3: relocate aircraft, close & barricade area |
| P3D | Phase 3: break out & remove old pavement | 2027-08-12 → 2027-07-19 (-24d) | 2027-08-23 → 2027-07-27 (-27d) |  | P3C → P3B |  |
| P3S | Phase 3: subgrade repair & cement-treated base | 2027-08-24 → 2027-07-28 (-27d) | 2027-09-02 → 2027-08-05 (-28d) |  |  |  |
| P3P | Phase 3: slip-form concrete paving (6 lanes) | 2027-09-03 → 2027-08-06 (-28d) | 2027-09-15 → 2027-08-16 (-30d) |  |  |  |
| P3J | Phase 3: cure, saw-cut & seal joints | 2027-09-16 → 2027-08-17 (-30d) | 2027-09-24 → 2027-08-24 (-31d) |  |  |  |
| P3M | Phase 3: markings & lighting | 2027-09-27 → 2027-08-25 (-33d) | 2027-09-29 → 2027-08-27 (-33d) |  |  |  |
| P3O | Phase 3: inspection, reopen & return aircraft | 2027-09-30 → 2027-08-30 (-31d) | 2027-09-30 → 2027-08-30 (-31d) |  | P3M → P3X |  |
| 06 | **Phase 4** | 2027-10-01 → 2027-08-31 (-31d) | 2027-11-23 → 2027-10-14 (-40d) |  |  |  |
| P4C | Phase 4: relocate aircraft from stand 4 | 2027-10-01 → 2027-08-31 (-31d) | 2027-10-04 → 2027-08-31 (-34d) | 2d → 1d |  | was named Phase 4: relocate aircraft, close & barricade area |
| P4D | Phase 4: break out & remove old pavement | 2027-10-05 → 2027-09-02 (-33d) | 2027-10-14 → 2027-09-10 (-34d) |  | P4C → P4B |  |
| P4S | Phase 4: subgrade repair & cement-treated base | 2027-10-15 → 2027-09-11 (-34d) | 2027-10-26 → 2027-09-20 (-36d) |  |  |  |
| P4P | Phase 4: slip-form concrete paving (6 lanes) | 2027-10-27 → 2027-09-21 (-36d) | 2027-11-08 → 2027-09-30 (-39d) |  |  |  |
| P4J | Phase 4: cure, saw-cut & seal joints | 2027-11-09 → 2027-10-01 (-39d) | 2027-11-17 → 2027-10-08 (-40d) |  |  |  |
| P4M | Phase 4: markings & lighting | 2027-11-18 → 2027-10-09 (-40d) | 2027-11-22 → 2027-10-12 (-41d) |  |  |  |
| P4O | Phase 4: inspection, reopen & return aircraft | 2027-11-23 → 2027-10-14 (-40d) | 2027-11-23 → 2027-10-14 (-40d) |  | P4M → P4X |  |
| 07 | **Phase 5** | 2027-11-24 → 2027-10-15 (-40d) | 2028-01-14 → 2027-11-29 (-46d) |  |  |  |
| P5C | Phase 5: relocate aircraft from stand 5 | 2027-11-24 → 2027-10-15 (-40d) | 2027-11-25 → 2027-10-15 (-41d) | 2d → 1d |  | was named Phase 5: relocate aircraft, close & barricade area |
| P5D | Phase 5: break out & remove old pavement | 2027-11-26 → 2027-10-18 (-39d) | 2027-12-07 → 2027-10-26 (-42d) |  | P5C → P5B |  |
| P5S | Phase 5: subgrade repair & cement-treated base | 2027-12-08 → 2027-10-27 (-42d) | 2027-12-17 → 2027-11-04 (-43d) |  |  |  |
| P5P | Phase 5: slip-form concrete paving (6 lanes) | 2027-12-20 → 2027-11-05 (-45d) | 2027-12-30 → 2027-11-15 (-45d) |  |  |  |
| P5J | Phase 5: cure, saw-cut & seal joints | 2027-12-31 → 2027-11-16 (-45d) | 2028-01-10 → 2027-11-23 (-48d) |  |  |  |
| P5M | Phase 5: markings & lighting | 2028-01-11 → 2027-11-24 (-48d) | 2028-01-13 → 2027-11-26 (-48d) |  |  |  |
| P5O | Phase 5: inspection, reopen & return aircraft | 2028-01-14 → 2027-11-29 (-46d) | 2028-01-14 → 2027-11-29 (-46d) |  | P5M → P5X |  |
| 08 | **Phase 6** | 2028-01-17 → 2027-11-30 (-48d) | 2028-03-08 → 2028-01-13 (-55d) |  |  |  |
| P6C | Phase 6: relocate aircraft from stand 6 | 2028-01-17 → 2027-11-30 (-48d) | 2028-01-18 → 2027-11-30 (-49d) | 2d → 1d |  | was named Phase 6: relocate aircraft, close & barricade area |
| P6D | Phase 6: break out & remove old pavement | 2028-01-19 → 2027-12-02 (-48d) | 2028-01-28 → 2027-12-10 (-49d) |  | P6C → P6B |  |
| P6S | Phase 6: subgrade repair & cement-treated base | 2028-01-31 → 2027-12-11 (-51d) | 2028-02-09 → 2027-12-20 (-51d) |  |  |  |
| P6P | Phase 6: slip-form concrete paving (6 lanes) | 2028-02-10 → 2027-12-21 (-51d) | 2028-02-22 → 2027-12-30 (-54d) |  |  |  |
| P6J | Phase 6: cure, saw-cut & seal joints | 2028-02-23 → 2027-12-31 (-54d) | 2028-03-02 → 2028-01-07 (-55d) |  |  |  |
| P6M | Phase 6: markings & lighting | 2028-03-03 → 2028-01-08 (-55d) | 2028-03-07 → 2028-01-11 (-56d) |  |  |  |
| P6O | Phase 6: inspection, reopen & return aircraft | 2028-03-08 → 2028-01-13 (-55d) | 2028-03-08 → 2028-01-13 (-55d) |  | P6M → P6X |  |
