# Live Airport Concourse: Restroom Refurbishment

How a schedule from Primavera P6 changed from version to version. A marks actual dates.

## Version 1 (data date 2027-01-04, saved 2026-11-17)

| ID | WBS | Task | Duration | Start | Finish | Predecessors | Total float |
| --- | --- | --- | --- | --- | --- | --- | --- |
|  | 01 | **Milestones** |  | 2027-01-04 | 2027-12-16 |  |  |
| MS000 |  | Notice to Proceed | 0d | 2027-01-04 | 2027-01-04 |  | 0d |
| MS999 |  | All restroom blocks reopened | 0d | 2027-12-16 | 2027-12-16 | P6O | 0d |
|  | 02 | **Approvals & procurement** |  | 2027-01-04 | 2027-04-16 |  |  |
| EN100 |  | Design submittals & airport authority approvals | 30d | 2027-01-04 | 2027-02-12 | MS000 | 0d |
| PH000 |  | Temporary restroom trailers & wayfinding | 10d | 2027-02-15 | 2027-02-26 | EN100 | 35d |
| PR100 |  | Fixtures, partitions & tile: procure | 45d | 2027-02-15 | 2027-04-16 | EN100 | 0d |
|  | 03 | **Phase 1** |  | 2027-04-19 | 2027-05-27 |  |  |
| P1C |  | Phase 1: close blocks 1, 2 & set barricades | 1d | 2027-04-19 | 2027-04-19 | PR100, PH000 | 0d |
| P1D |  | Phase 1: demolition | 5d | 2027-04-20 | 2027-04-26 | P1C | 0d |
| P1M |  | Phase 1: plumbing & electrical rough-in | 8d | 2027-04-27 | 2027-05-06 | P1D | 0d |
| P1F |  | Phase 1: waterproofing, tile & partitions | 10d | 2027-05-07 | 2027-05-20 | P1M | 0d |
| P1X |  | Phase 1: fixtures & accessories | 4d | 2027-05-21 | 2027-05-26 | P1F | 0d |
| P1O |  | Phase 1: inspection & reopen to passengers | 1d | 2027-05-27 | 2027-05-27 | P1X | 0d |
|  | 04 | **Phase 2** |  | 2027-05-28 | 2027-07-07 |  |  |
| P2C |  | Phase 2: close blocks 3, 4 & set barricades | 1d | 2027-05-28 | 2027-05-28 | PR100, PH000, P1O | 0d |
| P2D |  | Phase 2: demolition | 5d | 2027-05-31 | 2027-06-04 | P2C | 0d |
| P2M |  | Phase 2: plumbing & electrical rough-in | 8d | 2027-06-07 | 2027-06-16 | P2D | 0d |
| P2F |  | Phase 2: waterproofing, tile & partitions | 10d | 2027-06-17 | 2027-06-30 | P2M | 0d |
| P2X |  | Phase 2: fixtures & accessories | 4d | 2027-07-01 | 2027-07-06 | P2F | 0d |
| P2O |  | Phase 2: inspection & reopen to passengers | 1d | 2027-07-07 | 2027-07-07 | P2X | 0d |
|  | 05 | **Phase 3** |  | 2027-07-08 | 2027-08-17 |  |  |
| P3C |  | Phase 3: close blocks 5, 6 & set barricades | 1d | 2027-07-08 | 2027-07-08 | PR100, PH000, P2O | 0d |
| P3D |  | Phase 3: demolition | 5d | 2027-07-09 | 2027-07-15 | P3C | 0d |
| P3M |  | Phase 3: plumbing & electrical rough-in | 8d | 2027-07-16 | 2027-07-27 | P3D | 0d |
| P3F |  | Phase 3: waterproofing, tile & partitions | 10d | 2027-07-28 | 2027-08-10 | P3M | 0d |
| P3X |  | Phase 3: fixtures & accessories | 4d | 2027-08-11 | 2027-08-16 | P3F | 0d |
| P3O |  | Phase 3: inspection & reopen to passengers | 1d | 2027-08-17 | 2027-08-17 | P3X | 0d |
|  | 06 | **Phase 4** |  | 2027-08-18 | 2027-09-27 |  |  |
| P4C |  | Phase 4: close blocks 7, 8 & set barricades | 1d | 2027-08-18 | 2027-08-18 | PR100, PH000, P3O | 0d |
| P4D |  | Phase 4: demolition | 5d | 2027-08-19 | 2027-08-25 | P4C | 0d |
| P4M |  | Phase 4: plumbing & electrical rough-in | 8d | 2027-08-26 | 2027-09-06 | P4D | 0d |
| P4F |  | Phase 4: waterproofing, tile & partitions | 10d | 2027-09-07 | 2027-09-20 | P4M | 0d |
| P4X |  | Phase 4: fixtures & accessories | 4d | 2027-09-21 | 2027-09-24 | P4F | 0d |
| P4O |  | Phase 4: inspection & reopen to passengers | 1d | 2027-09-27 | 2027-09-27 | P4X | 0d |
|  | 07 | **Phase 5** |  | 2027-09-28 | 2027-11-05 |  |  |
| P5C |  | Phase 5: close blocks 9, 10 & set barricades | 1d | 2027-09-28 | 2027-09-28 | PR100, PH000, P4O | 0d |
| P5D |  | Phase 5: demolition | 5d | 2027-09-29 | 2027-10-05 | P5C | 0d |
| P5M |  | Phase 5: plumbing & electrical rough-in | 8d | 2027-10-06 | 2027-10-15 | P5D | 0d |
| P5F |  | Phase 5: waterproofing, tile & partitions | 10d | 2027-10-18 | 2027-10-29 | P5M | 0d |
| P5X |  | Phase 5: fixtures & accessories | 4d | 2027-11-01 | 2027-11-04 | P5F | 0d |
| P5O |  | Phase 5: inspection & reopen to passengers | 1d | 2027-11-05 | 2027-11-05 | P5X | 0d |
|  | 08 | **Phase 6** |  | 2027-11-08 | 2027-12-16 |  |  |
| P6C |  | Phase 6: close blocks 11, 12 & set barricades | 1d | 2027-11-08 | 2027-11-08 | PR100, PH000, P5O | 0d |
| P6D |  | Phase 6: demolition | 5d | 2027-11-09 | 2027-11-15 | P6C | 0d |
| P6M |  | Phase 6: plumbing & electrical rough-in | 8d | 2027-11-16 | 2027-11-25 | P6D | 0d |
| P6F |  | Phase 6: waterproofing, tile & partitions | 10d | 2027-11-26 | 2027-12-09 | P6M | 0d |
| P6X |  | Phase 6: fixtures & accessories | 4d | 2027-12-10 | 2027-12-15 | P6F | 0d |
| P6O |  | Phase 6: inspection & reopen to passengers | 1d | 2027-12-16 | 2027-12-16 | P6X | 0d |

## Version 2 (data date 2027-01-04, saved 2026-11-17)

Last finish 2027-12-16 → 2027-11-03 (-43d).

Added:

| ID | Task | Duration | Start | Finish | Predecessors |
| --- | --- | --- | --- | --- | --- |
| P1H | Phase 1: erect dust-proof hoarding | 1d | 2027-04-02 | 2027-04-02 | P1C |
| P1R | Phase 1: remove hoarding & clean | 1d | 2027-05-05 | 2027-05-05 | P1X |
| P2H | Phase 2: erect dust-proof hoarding | 1d | 2027-05-08 | 2027-05-08 | P2C |
| P2R | Phase 2: remove hoarding & clean | 1d | 2027-06-10 | 2027-06-10 | P2X |
| P3H | Phase 3: erect dust-proof hoarding | 1d | 2027-06-14 | 2027-06-14 | P3C |
| P3R | Phase 3: remove hoarding & clean | 1d | 2027-07-16 | 2027-07-16 | P3X |
| P4H | Phase 4: erect dust-proof hoarding | 1d | 2027-07-20 | 2027-07-20 | P4C |
| P4R | Phase 4: remove hoarding & clean | 1d | 2027-08-21 | 2027-08-21 | P4X |
| P5H | Phase 5: erect dust-proof hoarding | 1d | 2027-08-25 | 2027-08-25 | P5C |
| P5R | Phase 5: remove hoarding & clean | 1d | 2027-09-27 | 2027-09-27 | P5X |
| P6H | Phase 6: erect dust-proof hoarding | 1d | 2027-09-30 | 2027-09-30 | P6C |
| P6R | Phase 6: remove hoarding & clean | 1d | 2027-11-02 | 2027-11-02 | P6X |

Changed:

| ID | Task | Start | Finish | Predecessors | Other |
| --- | --- | --- | --- | --- | --- |
| 01 | **Milestones** |  | 2027-12-16 → 2027-11-03 (-43d) |  |  |
| MS999 | All restroom blocks reopened | 2027-12-16 → 2027-11-03 (-43d) | 2027-12-16 → 2027-11-03 (-43d) |  |  |
| 02 | **Approvals & procurement** |  | 2027-04-16 → 2027-03-31 (-16d) |  |  |
| EN100 | Design submittals & airport authority approvals |  | 2027-02-12 → 2027-02-06 (-6d) |  |  |
| PH000 | Temporary restroom trailers & wayfinding | 2027-02-15 → 2027-02-08 (-7d) | 2027-02-26 → 2027-02-18 (-8d) |  |  |
| PR100 | Fixtures, partitions & tile: procure | 2027-02-15 → 2027-02-08 (-7d) | 2027-04-16 → 2027-03-31 (-16d) |  |  |
| 03 | **Phase 1** | 2027-04-19 → 2027-04-01 (-18d) | 2027-05-27 → 2027-05-06 (-21d) |  |  |
| P1C | Phase 1: close RB-01, RB-02 to passengers | 2027-04-19 → 2027-04-01 (-18d) | 2027-04-19 → 2027-04-01 (-18d) |  | was named Phase 1: close blocks 1, 2 & set barricades |
| P1D | Phase 1: strip-out & demolition | 2027-04-20 → 2027-04-03 (-17d) | 2027-04-26 → 2027-04-08 (-18d) | P1C → P1H | was named Phase 1: demolition |
| P1M | Phase 1: plumbing & electrical rough-in | 2027-04-27 → 2027-04-09 (-18d) | 2027-05-06 → 2027-04-17 (-19d) |  |  |
| P1F | Phase 1: waterproofing, tile & partitions | 2027-05-07 → 2027-04-19 (-18d) | 2027-05-20 → 2027-04-29 (-21d) |  |  |
| P1X | Phase 1: fixtures & accessories | 2027-05-21 → 2027-04-30 (-21d) | 2027-05-26 → 2027-05-04 (-22d) |  |  |
| P1O | Phase 1: inspection & reopen to passengers | 2027-05-27 → 2027-05-06 (-21d) | 2027-05-27 → 2027-05-06 (-21d) | P1X → P1R |  |
| 04 | **Phase 2** | 2027-05-28 → 2027-05-07 (-21d) | 2027-07-07 → 2027-06-11 (-26d) |  |  |
| P2C | Phase 2: close RB-03, RB-04 to passengers | 2027-05-28 → 2027-05-07 (-21d) | 2027-05-28 → 2027-05-07 (-21d) |  | was named Phase 2: close blocks 3, 4 & set barricades |
| P2D | Phase 2: strip-out & demolition | 2027-05-31 → 2027-05-10 (-21d) | 2027-06-04 → 2027-05-14 (-21d) | P2C → P2H | was named Phase 2: demolition |
| P2M | Phase 2: plumbing & electrical rough-in | 2027-06-07 → 2027-05-15 (-23d) | 2027-06-16 → 2027-05-24 (-23d) |  |  |
| P2F | Phase 2: waterproofing, tile & partitions | 2027-06-17 → 2027-05-25 (-23d) | 2027-06-30 → 2027-06-04 (-26d) |  |  |
| P2X | Phase 2: fixtures & accessories | 2027-07-01 → 2027-06-05 (-26d) | 2027-07-06 → 2027-06-09 (-27d) |  |  |
| P2O | Phase 2: inspection & reopen to passengers | 2027-07-07 → 2027-06-11 (-26d) | 2027-07-07 → 2027-06-11 (-26d) | P2X → P2R |  |
| 05 | **Phase 3** | 2027-07-08 → 2027-06-12 (-26d) | 2027-08-17 → 2027-07-17 (-31d) |  |  |
| P3C | Phase 3: close RB-05, RB-06 to passengers | 2027-07-08 → 2027-06-12 (-26d) | 2027-07-08 → 2027-06-12 (-26d) |  | was named Phase 3: close blocks 5, 6 & set barricades |
| P3D | Phase 3: strip-out & demolition | 2027-07-09 → 2027-06-15 (-24d) | 2027-07-15 → 2027-06-19 (-26d) | P3C → P3H | was named Phase 3: demolition |
| P3M | Phase 3: plumbing & electrical rough-in | 2027-07-16 → 2027-06-21 (-25d) | 2027-07-27 → 2027-06-29 (-28d) |  |  |
| P3F | Phase 3: waterproofing, tile & partitions | 2027-07-28 → 2027-06-30 (-28d) | 2027-08-10 → 2027-07-10 (-31d) |  |  |
| P3X | Phase 3: fixtures & accessories | 2027-08-11 → 2027-07-12 (-30d) | 2027-08-16 → 2027-07-15 (-32d) |  |  |
| P3O | Phase 3: inspection & reopen to passengers | 2027-08-17 → 2027-07-17 (-31d) | 2027-08-17 → 2027-07-17 (-31d) | P3X → P3R |  |
| 06 | **Phase 4** | 2027-08-18 → 2027-07-19 (-30d) | 2027-09-27 → 2027-08-23 (-35d) |  |  |
| P4C | Phase 4: close RB-07, RB-08 to passengers | 2027-08-18 → 2027-07-19 (-30d) | 2027-08-18 → 2027-07-19 (-30d) |  | was named Phase 4: close blocks 7, 8 & set barricades |
| P4D | Phase 4: strip-out & demolition | 2027-08-19 → 2027-07-21 (-29d) | 2027-08-25 → 2027-07-26 (-30d) | P4C → P4H | was named Phase 4: demolition |
| P4M | Phase 4: plumbing & electrical rough-in | 2027-08-26 → 2027-07-27 (-30d) | 2027-09-06 → 2027-08-04 (-33d) |  |  |
| P4F | Phase 4: waterproofing, tile & partitions | 2027-09-07 → 2027-08-05 (-33d) | 2027-09-20 → 2027-08-16 (-35d) |  |  |
| P4X | Phase 4: fixtures & accessories | 2027-09-21 → 2027-08-17 (-35d) | 2027-09-24 → 2027-08-20 (-35d) |  |  |
| P4O | Phase 4: inspection & reopen to passengers | 2027-09-27 → 2027-08-23 (-35d) | 2027-09-27 → 2027-08-23 (-35d) | P4X → P4R |  |
| 07 | **Phase 5** | 2027-09-28 → 2027-08-24 (-35d) | 2027-11-05 → 2027-09-28 (-38d) |  |  |
| P5C | Phase 5: close RB-09, RB-10 to passengers | 2027-09-28 → 2027-08-24 (-35d) | 2027-09-28 → 2027-08-24 (-35d) |  | was named Phase 5: close blocks 9, 10 & set barricades |
| P5D | Phase 5: strip-out & demolition | 2027-09-29 → 2027-08-26 (-34d) | 2027-10-05 → 2027-08-31 (-35d) | P5C → P5H | was named Phase 5: demolition |
| P5M | Phase 5: plumbing & electrical rough-in | 2027-10-06 → 2027-09-01 (-35d) | 2027-10-15 → 2027-09-09 (-36d) |  |  |
| P5F | Phase 5: waterproofing, tile & partitions | 2027-10-18 → 2027-09-10 (-38d) | 2027-10-29 → 2027-09-21 (-38d) |  |  |
| P5X | Phase 5: fixtures & accessories | 2027-11-01 → 2027-09-22 (-40d) | 2027-11-04 → 2027-09-25 (-40d) |  |  |
| P5O | Phase 5: inspection & reopen to passengers | 2027-11-05 → 2027-09-28 (-38d) | 2027-11-05 → 2027-09-28 (-38d) | P5X → P5R |  |
| 08 | **Phase 6** | 2027-11-08 → 2027-09-29 (-40d) | 2027-12-16 → 2027-11-03 (-43d) |  |  |
| P6C | Phase 6: close RB-11, RB-12 to passengers | 2027-11-08 → 2027-09-29 (-40d) | 2027-11-08 → 2027-09-29 (-40d) |  | was named Phase 6: close blocks 11, 12 & set barricades |
| P6D | Phase 6: strip-out & demolition | 2027-11-09 → 2027-10-01 (-39d) | 2027-11-15 → 2027-10-06 (-40d) | P6C → P6H | was named Phase 6: demolition |
| P6M | Phase 6: plumbing & electrical rough-in | 2027-11-16 → 2027-10-07 (-40d) | 2027-11-25 → 2027-10-15 (-41d) |  |  |
| P6F | Phase 6: waterproofing, tile & partitions | 2027-11-26 → 2027-10-16 (-41d) | 2027-12-09 → 2027-10-27 (-43d) |  |  |
| P6X | Phase 6: fixtures & accessories | 2027-12-10 → 2027-10-28 (-43d) | 2027-12-15 → 2027-11-01 (-44d) |  |  |
| P6O | Phase 6: inspection & reopen to passengers | 2027-12-16 → 2027-11-03 (-43d) | 2027-12-16 → 2027-11-03 (-43d) | P6X → P6R |  |
