# Wastewater Pumping Station: PLC & Controls Upgrade

How a schedule from Primavera P6 changed from version to version. A marks actual dates.

## Version 1 (data date 2027-02-01, saved 2026-11-17)

| ID | WBS | Task | Duration | Start | Finish | Predecessors | Total float |
| --- | --- | --- | --- | --- | --- | --- | --- |
|  | 01 | **Milestones** |  | 2027-02-01 | 2027-10-29 |  |  |
| MS000 |  | Notice to Proceed | 0d | 2027-02-01 | 2027-02-01 |  | 0d |
| MS999 |  | Final acceptance | 0d | 2027-10-29 | 2027-10-29 | DM100, CX200 | 0d |
|  | 02 | **Engineering & procurement** |  | 2027-02-01 | 2027-06-25 |  |  |
| EN100 |  | Control narrative, I/O list & shutdown plan submittals | 35d | 2027-02-01 | 2027-03-19 | MS000 | 0d |
| PR100 |  | PLC panels: fabricate & factory test | 70d | 2027-03-22 | 2027-06-25 | EN100 | 0d |
| PR110 |  | Owner review of shutdown plan | 20d | 2027-03-22 | 2027-04-16 | EN100 | 88d |
|  | 03 | **Installation** |  | 2027-06-28 | 2027-08-18 |  |  |
| IN100 |  | Install new PLC panels & SCADA workstation | 15d | 2027-06-28 | 2027-07-16 | PR100 | 0d |
| IN110 |  | Pull new I/O cabling to each pump | 15d | 2027-07-19 | 2027-08-06 | IN100 | 0d |
| CX100 |  | Open-loop tests & SCADA graphics | 8d | 2027-08-09 | 2027-08-18 | IN110 | 0d |
|  | 04 | **Shutdown 1** |  | 2027-08-18 | 2027-08-26 |  |  |
| S1N |  | Shutdown 1: 21-day & 3-day notices to owner | 0d | 2027-08-18 | 2027-08-18 | CX100, PR110 | 0d |
| S1L |  | Shutdown 1: pump 1 offline, lock-out | 1d | 2027-08-19 | 2027-08-19 | S1N | 0d |
| S1C |  | Shutdown 1: cut over pump 1 I/O to new PLC | 3d | 2027-08-20 | 2027-08-24 | S1L | 0d |
| S1T |  | Shutdown 1: closed-loop test & return to service | 2d | 2027-08-25 | 2027-08-26 | S1C | 0d |
|  | 05 | **Shutdown 2** |  | 2027-08-26 | 2027-09-03 |  |  |
| S2N |  | Shutdown 2: 21-day & 3-day notices to owner | 0d | 2027-08-26 | 2027-08-26 | CX100, PR110, S1T | 0d |
| S2L |  | Shutdown 2: pump 2 offline, lock-out | 1d | 2027-08-27 | 2027-08-27 | S2N | 0d |
| S2C |  | Shutdown 2: cut over pump 2 I/O to new PLC | 3d | 2027-08-30 | 2027-09-01 | S2L | 0d |
| S2T |  | Shutdown 2: closed-loop test & return to service | 2d | 2027-09-02 | 2027-09-03 | S2C | 0d |
|  | 06 | **Shutdown 3** |  | 2027-09-03 | 2027-09-13 |  |  |
| S3N |  | Shutdown 3: 21-day & 3-day notices to owner | 0d | 2027-09-03 | 2027-09-03 | CX100, PR110, S2T | 0d |
| S3L |  | Shutdown 3: pump 3 offline, lock-out | 1d | 2027-09-06 | 2027-09-06 | S3N | 0d |
| S3C |  | Shutdown 3: cut over pump 3 I/O to new PLC | 3d | 2027-09-07 | 2027-09-09 | S3L | 0d |
| S3T |  | Shutdown 3: closed-loop test & return to service | 2d | 2027-09-10 | 2027-09-13 | S3C | 0d |
|  | 07 | **Shutdown 4** |  | 2027-09-13 | 2027-09-21 |  |  |
| S4N |  | Shutdown 4: 21-day & 3-day notices to owner | 0d | 2027-09-13 | 2027-09-13 | CX100, PR110, S3T | 0d |
| S4L |  | Shutdown 4: pump 4 offline, lock-out | 1d | 2027-09-14 | 2027-09-14 | S4N | 0d |
| S4C |  | Shutdown 4: cut over pump 4 I/O to new PLC | 3d | 2027-09-15 | 2027-09-17 | S4L | 0d |
| S4T |  | Shutdown 4: closed-loop test & return to service | 2d | 2027-09-20 | 2027-09-21 | S4C | 0d |
|  | 08 | **Shutdown 5** |  | 2027-09-21 | 2027-09-29 |  |  |
| S5N |  | Shutdown 5: 21-day & 3-day notices to owner | 0d | 2027-09-21 | 2027-09-21 | CX100, PR110, S4T | 0d |
| S5L |  | Shutdown 5: pump 5 offline, lock-out | 1d | 2027-09-22 | 2027-09-22 | S5N | 0d |
| S5C |  | Shutdown 5: cut over pump 5 I/O to new PLC | 3d | 2027-09-23 | 2027-09-27 | S5L | 0d |
| S5T |  | Shutdown 5: closed-loop test & return to service | 2d | 2027-09-28 | 2027-09-29 | S5C | 0d |
|  | 09 | **Close-out** |  | 2027-09-30 | 2027-10-29 |  |  |
| CX200 |  | 30-day performance period & training | 22d | 2027-09-30 | 2027-10-29 | S5T | 0d |
| DM100 |  | Remove old PLC panel | 3d | 2027-09-30 | 2027-10-04 | S5T | 19d |

## Version 2 (data date 2027-02-01, saved 2026-11-17)

Last finish stays 2027-10-29.

Changed:

| ID | Task | Other |
| --- | --- | --- |
| IN110 | Install cable tray & pull new I/O cabling to each pump | was named Pull new I/O cabling to each pump |
| S1L | Shutdown 1: P-01 offline, lock-out | was named Shutdown 1: pump 1 offline, lock-out |
| S1C | Shutdown 1: cut over P-01 I/O to new PLC | was named Shutdown 1: cut over pump 1 I/O to new PLC |
| S2L | Shutdown 2: P-02 offline, lock-out | was named Shutdown 2: pump 2 offline, lock-out |
| S2C | Shutdown 2: cut over P-02 I/O to new PLC | was named Shutdown 2: cut over pump 2 I/O to new PLC |
| S3L | Shutdown 3: P-03 offline, lock-out | was named Shutdown 3: pump 3 offline, lock-out |
| S3C | Shutdown 3: cut over P-03 I/O to new PLC | was named Shutdown 3: cut over pump 3 I/O to new PLC |
| S4L | Shutdown 4: P-04 offline, lock-out | was named Shutdown 4: pump 4 offline, lock-out |
| S4C | Shutdown 4: cut over P-04 I/O to new PLC | was named Shutdown 4: cut over pump 4 I/O to new PLC |
| S5L | Shutdown 5: P-05 offline, lock-out | was named Shutdown 5: pump 5 offline, lock-out |
| S5C | Shutdown 5: cut over P-05 I/O to new PLC | was named Shutdown 5: cut over pump 5 I/O to new PLC |
