# Residential Tower, 2B + G + 35 (GCC)

How a schedule from Primavera P6 changed from version to version. A marks actual dates.

## Version 1 (data date 2027-01-04, saved 2026-11-17)

| ID | WBS | Task | Duration | Start | Finish | Predecessors | Total float |
| --- | --- | --- | --- | --- | --- | --- | --- |
|  | 01 | **Milestones** |  | 2027-01-04 | 2028-04-01 |  |  |
| MS000 |  | Notice to Proceed | 0d | 2027-01-04 | 2027-01-04 |  | 0d |
| MS999 |  | Building completion certificate | 0d | 2028-04-01 | 2028-04-01 | TC100 | 0d |
|  | 02 | **Substructure** |  | 2027-01-04 | 2027-03-17 |  |  |
| SB100 |  | Shoring, excavation & dewatering | 45d | 2027-01-04 | 2027-02-24 | MS000 | 0d |
| SB110 |  | Raft foundation pour | 18d | 2027-02-25 | 2027-03-17 | SB100 | 0d |
|  | 03 | **Superstructure** |  | 2027-03-18 | 2027-12-25 |  |  |
| CW-2 |  | B2: core walls (jump form) | 3d | 2027-03-18 | 2027-03-20 | SB110 | 0d |
| CW-1 |  | B1: core walls (jump form) | 3d | 2027-03-22 | 2027-03-24 | CW-2 | 7d |
| SL-2 |  | B2: columns & slab cycle | 10d | 2027-03-22 | 2027-04-01 | CW-2 | 0d |
| CW0 |  | Ground: core walls (jump form) | 3d | 2027-04-02 | 2027-04-05 | CW-1, SL-2 | 7d |
| SL-1 |  | B1: columns & slab cycle | 10d | 2027-04-02 | 2027-04-13 | CW-1, SL-2 | 0d |
| CW1 |  | Level 1: core walls (jump form) | 3d | 2027-04-14 | 2027-04-16 | CW0, SL-1 | 7d |
| SL0 |  | Ground: columns & slab cycle | 10d | 2027-04-14 | 2027-04-24 | CW0, SL-1 | 0d |
| CW2 |  | Level 2: core walls (jump form) | 3d | 2027-04-26 | 2027-04-28 | CW1, SL0 | 3d |
| SL1 |  | Level 1: columns & slab cycle | 6d | 2027-04-26 | 2027-05-01 | CW1, SL0 | 0d |
| CW3 |  | Level 3: core walls (jump form) | 3d | 2027-05-03 | 2027-05-05 | CW2, SL1 | 3d |
| SL2 |  | Level 2: columns & slab cycle | 6d | 2027-05-03 | 2027-05-08 | CW2, SL1 | 0d |
| CW4 |  | Level 4: core walls (jump form) | 3d | 2027-05-10 | 2027-05-12 | CW3, SL2 | 3d |
| SL3 |  | Level 3: columns & slab cycle | 6d | 2027-05-10 | 2027-05-15 | CW3, SL2 | 0d |
| CW5 |  | Level 5: core walls (jump form) | 3d | 2027-05-17 | 2027-05-19 | CW4, SL3 | 3d |
| SL4 |  | Level 4: columns & slab cycle | 6d | 2027-05-17 | 2027-05-22 | CW4, SL3 | 0d |
| CW6 |  | Level 6: core walls (jump form) | 3d | 2027-05-24 | 2027-05-26 | CW5, SL4 | 3d |
| SL5 |  | Level 5: columns & slab cycle | 6d | 2027-05-24 | 2027-05-29 | CW5, SL4 | 0d |
| CW7 |  | Level 7: core walls (jump form) | 3d | 2027-05-31 | 2027-06-02 | CW6, SL5 | 3d |
| SL6 |  | Level 6: columns & slab cycle | 6d | 2027-05-31 | 2027-06-05 | CW6, SL5 | 0d |
| CW8 |  | Level 8: core walls (jump form) | 3d | 2027-06-07 | 2027-06-09 | CW7, SL6 | 3d |
| SL7 |  | Level 7: columns & slab cycle | 6d | 2027-06-07 | 2027-06-12 | CW7, SL6 | 0d |
| CW9 |  | Level 9: core walls (jump form) | 3d | 2027-06-14 | 2027-06-16 | CW8, SL7 | 3d |
| SL8 |  | Level 8: columns & slab cycle | 6d | 2027-06-14 | 2027-06-19 | CW8, SL7 | 0d |
| CW10 |  | Level 10: core walls (jump form) | 3d | 2027-06-21 | 2027-06-23 | CW9, SL8 | 3d |
| SL9 |  | Level 9: columns & slab cycle | 6d | 2027-06-21 | 2027-06-26 | CW9, SL8 | 0d |
| CW11 |  | Level 11: core walls (jump form) | 3d | 2027-06-28 | 2027-06-30 | CW10, SL9 | 3d |
| SL10 |  | Level 10: columns & slab cycle | 6d | 2027-06-28 | 2027-07-03 | CW10, SL9 | 0d |
| CW12 |  | Level 12: core walls (jump form) | 3d | 2027-07-05 | 2027-07-07 | CW11, SL10 | 3d |
| SL11 |  | Level 11: columns & slab cycle | 6d | 2027-07-05 | 2027-07-10 | CW11, SL10 | 0d |
| CW13 |  | Level 13: core walls (jump form) | 3d | 2027-07-12 | 2027-07-14 | CW12, SL11 | 3d |
| SL12 |  | Level 12: columns & slab cycle | 6d | 2027-07-12 | 2027-07-17 | CW12, SL11 | 0d |
| CW14 |  | Level 14: core walls (jump form) | 3d | 2027-07-19 | 2027-07-21 | CW13, SL12 | 3d |
| SL13 |  | Level 13: columns & slab cycle | 6d | 2027-07-19 | 2027-07-24 | CW13, SL12 | 0d |
| CW15 |  | Level 15: core walls (jump form) | 3d | 2027-07-26 | 2027-07-28 | CW14, SL13 | 3d |
| SL14 |  | Level 14: columns & slab cycle | 6d | 2027-07-26 | 2027-07-31 | CW14, SL13 | 0d |
| CW16 |  | Level 16: core walls (jump form) | 3d | 2027-08-02 | 2027-08-04 | CW15, SL14 | 3d |
| SL15 |  | Level 15: columns & slab cycle | 6d | 2027-08-02 | 2027-08-07 | CW15, SL14 | 0d |
| CW17 |  | Level 17: core walls (jump form) | 3d | 2027-08-09 | 2027-08-11 | CW16, SL15 | 3d |
| SL16 |  | Level 16: columns & slab cycle | 6d | 2027-08-09 | 2027-08-14 | CW16, SL15 | 0d |
| CW18 |  | Level 18: core walls (jump form) | 3d | 2027-08-16 | 2027-08-18 | CW17, SL16 | 3d |
| SL17 |  | Level 17: columns & slab cycle | 6d | 2027-08-16 | 2027-08-21 | CW17, SL16 | 0d |
| CW19 |  | Level 19: core walls (jump form) | 3d | 2027-08-23 | 2027-08-25 | CW18, SL17 | 3d |
| SL18 |  | Level 18: columns & slab cycle | 6d | 2027-08-23 | 2027-08-28 | CW18, SL17 | 0d |
| CW20 |  | Level 20: core walls (jump form) | 3d | 2027-08-30 | 2027-09-01 | CW19, SL18 | 3d |
| SL19 |  | Level 19: columns & slab cycle | 6d | 2027-08-30 | 2027-09-04 | CW19, SL18 | 0d |
| CW21 |  | Level 21: core walls (jump form) | 3d | 2027-09-06 | 2027-09-08 | CW20, SL19 | 3d |
| SL20 |  | Level 20: columns & slab cycle | 6d | 2027-09-06 | 2027-09-11 | CW20, SL19 | 0d |
| CW22 |  | Level 22: core walls (jump form) | 3d | 2027-09-13 | 2027-09-15 | CW21, SL20 | 3d |
| SL21 |  | Level 21: columns & slab cycle | 6d | 2027-09-13 | 2027-09-18 | CW21, SL20 | 0d |
| CW23 |  | Level 23: core walls (jump form) | 3d | 2027-09-20 | 2027-09-22 | CW22, SL21 | 3d |
| SL22 |  | Level 22: columns & slab cycle | 6d | 2027-09-20 | 2027-09-25 | CW22, SL21 | 0d |
| CW24 |  | Level 24: core walls (jump form) | 3d | 2027-09-27 | 2027-09-29 | CW23, SL22 | 3d |
| SL23 |  | Level 23: columns & slab cycle | 6d | 2027-09-27 | 2027-10-02 | CW23, SL22 | 0d |
| CW25 |  | Level 25: core walls (jump form) | 3d | 2027-10-04 | 2027-10-06 | CW24, SL23 | 3d |
| SL24 |  | Level 24: columns & slab cycle | 6d | 2027-10-04 | 2027-10-09 | CW24, SL23 | 0d |
| CW26 |  | Level 26: core walls (jump form) | 3d | 2027-10-11 | 2027-10-13 | CW25, SL24 | 3d |
| SL25 |  | Level 25: columns & slab cycle | 6d | 2027-10-11 | 2027-10-16 | CW25, SL24 | 0d |
| CW27 |  | Level 27: core walls (jump form) | 3d | 2027-10-18 | 2027-10-20 | CW26, SL25 | 3d |
| SL26 |  | Level 26: columns & slab cycle | 6d | 2027-10-18 | 2027-10-23 | CW26, SL25 | 0d |
| CW28 |  | Level 28: core walls (jump form) | 3d | 2027-10-25 | 2027-10-27 | CW27, SL26 | 3d |
| SL27 |  | Level 27: columns & slab cycle | 6d | 2027-10-25 | 2027-10-30 | CW27, SL26 | 0d |
| CW29 |  | Level 29: core walls (jump form) | 3d | 2027-11-01 | 2027-11-03 | CW28, SL27 | 3d |
| SL28 |  | Level 28: columns & slab cycle | 6d | 2027-11-01 | 2027-11-06 | CW28, SL27 | 0d |

| ID | WBS | Task | Duration | Start | Finish | Predecessors | Total float |
| --- | --- | --- | --- | --- | --- | --- | --- |
| CW30 |  | Level 30: core walls (jump form) | 3d | 2027-11-08 | 2027-11-10 | CW29, SL28 | 3d |
| SL29 |  | Level 29: columns & slab cycle | 6d | 2027-11-08 | 2027-11-13 | CW29, SL28 | 0d |
| CW31 |  | Level 31: core walls (jump form) | 3d | 2027-11-15 | 2027-11-17 | CW30, SL29 | 3d |
| SL30 |  | Level 30: columns & slab cycle | 6d | 2027-11-15 | 2027-11-20 | CW30, SL29 | 0d |
| CW32 |  | Level 32: core walls (jump form) | 3d | 2027-11-22 | 2027-11-24 | CW31, SL30 | 3d |
| SL31 |  | Level 31: columns & slab cycle | 6d | 2027-11-22 | 2027-11-27 | CW31, SL30 | 0d |
| CW33 |  | Level 33: core walls (jump form) | 3d | 2027-11-29 | 2027-12-01 | CW32, SL31 | 3d |
| SL32 |  | Level 32: columns & slab cycle | 6d | 2027-11-29 | 2027-12-04 | CW32, SL31 | 0d |
| CW34 |  | Level 34: core walls (jump form) | 3d | 2027-12-06 | 2027-12-08 | CW33, SL32 | 3d |
| SL33 |  | Level 33: columns & slab cycle | 6d | 2027-12-06 | 2027-12-11 | CW33, SL32 | 0d |
| CW35 |  | Level 35: core walls (jump form) | 3d | 2027-12-13 | 2027-12-15 | CW34, SL33 | 3d |
| SL34 |  | Level 34: columns & slab cycle | 6d | 2027-12-13 | 2027-12-18 | CW34, SL33 | 0d |
| SL35 |  | Level 35: columns & slab cycle | 6d | 2027-12-20 | 2027-12-25 | CW35, SL34 | 0d |
|  | 04 | **Procurement** |  | 2027-01-04 | 2027-06-15 |  |  |
| PR100 |  | Facade unitised panels: design, mock-up & production | 140d | 2027-01-04 | 2027-06-15 | MS000 | 26d |
|  | 05 | **Facade** |  | 2027-06-16 | 2028-01-27 |  |  |
| FC1 |  | Level 1: unitised facade panels | 4d | 2027-06-16 | 2027-06-19 | SL7, PR100 | 26d |
| FC2 |  | Level 2: unitised facade panels | 4d | 2027-06-21 | 2027-06-24 | SL8, FC1 | 27d |
| FC3 |  | Level 3: unitised facade panels | 4d | 2027-06-28 | 2027-07-01 | SL9, FC2 | 26d |
| FC4 |  | Level 4: unitised facade panels | 4d | 2027-07-05 | 2027-07-08 | SL10, FC3 | 25d |
| FC5 |  | Level 5: unitised facade panels | 4d | 2027-07-12 | 2027-07-15 | SL11, FC4 | 24d |
| FC6 |  | Level 6: unitised facade panels | 4d | 2027-07-19 | 2027-07-22 | SL12, FC5 | 23d |
| FC7 |  | Level 7: unitised facade panels | 4d | 2027-07-26 | 2027-07-29 | SL13, FC6 | 22d |
| FC8 |  | Level 8: unitised facade panels | 4d | 2027-08-02 | 2027-08-05 | SL14, FC7 | 21d |
| FC9 |  | Level 9: unitised facade panels | 4d | 2027-08-09 | 2027-08-12 | SL15, FC8 | 20d |
| FC10 |  | Level 10: unitised facade panels | 4d | 2027-08-16 | 2027-08-19 | SL16, FC9 | 19d |
| FC11 |  | Level 11: unitised facade panels | 4d | 2027-08-23 | 2027-08-26 | SL17, FC10 | 18d |
| FC12 |  | Level 12: unitised facade panels | 4d | 2027-08-30 | 2027-09-02 | SL18, FC11 | 17d |
| FC13 |  | Level 13: unitised facade panels | 4d | 2027-09-06 | 2027-09-09 | SL19, FC12 | 16d |
| FC14 |  | Level 14: unitised facade panels | 4d | 2027-09-13 | 2027-09-16 | SL20, FC13 | 15d |
| FC15 |  | Level 15: unitised facade panels | 4d | 2027-09-20 | 2027-09-23 | SL21, FC14 | 14d |
| FC16 |  | Level 16: unitised facade panels | 4d | 2027-09-27 | 2027-09-30 | SL22, FC15 | 13d |
| FC17 |  | Level 17: unitised facade panels | 4d | 2027-10-04 | 2027-10-07 | SL23, FC16 | 12d |
| FC18 |  | Level 18: unitised facade panels | 4d | 2027-10-11 | 2027-10-14 | SL24, FC17 | 11d |
| FC19 |  | Level 19: unitised facade panels | 4d | 2027-10-18 | 2027-10-21 | SL25, FC18 | 10d |
| FC20 |  | Level 20: unitised facade panels | 4d | 2027-10-25 | 2027-10-28 | SL26, FC19 | 9d |
| FC21 |  | Level 21: unitised facade panels | 4d | 2027-11-01 | 2027-11-04 | SL27, FC20 | 8d |
| FC22 |  | Level 22: unitised facade panels | 4d | 2027-11-08 | 2027-11-11 | SL28, FC21 | 7d |
| FC23 |  | Level 23: unitised facade panels | 4d | 2027-11-15 | 2027-11-18 | SL29, FC22 | 6d |
| FC24 |  | Level 24: unitised facade panels | 4d | 2027-11-22 | 2027-11-25 | SL30, FC23 | 5d |
| FC25 |  | Level 25: unitised facade panels | 4d | 2027-11-29 | 2027-12-02 | SL31, FC24 | 4d |
| FC26 |  | Level 26: unitised facade panels | 4d | 2027-12-06 | 2027-12-09 | SL32, FC25 | 3d |
| FC27 |  | Level 27: unitised facade panels | 4d | 2027-12-13 | 2027-12-16 | SL33, FC26 | 2d |
| FC28 |  | Level 28: unitised facade panels | 4d | 2027-12-20 | 2027-12-23 | SL34, FC27 | 1d |
| FC29 |  | Level 29: unitised facade panels | 4d | 2027-12-27 | 2027-12-30 | SL35, FC28 | 0d |
| FC30 |  | Level 30: unitised facade panels | 4d | 2027-12-31 | 2028-01-04 | SL35, FC29 | 1d |
| FC31 |  | Level 31: unitised facade panels | 4d | 2028-01-05 | 2028-01-08 | SL35, FC30 | 2d |
| FC32 |  | Level 32: unitised facade panels | 4d | 2028-01-10 | 2028-01-13 | SL35, FC31 | 3d |
| FC33 |  | Level 33: unitised facade panels | 4d | 2028-01-14 | 2028-01-18 | SL35, FC32 | 4d |
| FC34 |  | Level 34: unitised facade panels | 4d | 2028-01-19 | 2028-01-22 | SL35, FC33 | 5d |
| FC35 |  | Level 35: unitised facade panels | 4d | 2028-01-24 | 2028-01-27 | SL35, FC34 | 6d |
|  | 06 | **MEP & finishes** |  | 2027-06-21 | 2028-02-15 |  |  |
| ME1 |  | Level 1: MEP first & second fix | 5d | 2027-06-21 | 2027-06-25 | FC1 | 26d |
| FI1 |  | Level 1: finishes & joinery | 5d | 2027-06-26 | 2027-07-01 | ME1 | 26d |
| ME2 |  | Level 2: MEP first & second fix | 5d | 2027-06-26 | 2027-07-01 | FC2, ME1 | 26d |
| FI2 |  | Level 2: finishes & joinery | 5d | 2027-07-02 | 2027-07-07 | ME2, FI1 | 26d |
| ME3 |  | Level 3: MEP first & second fix | 5d | 2027-07-02 | 2027-07-07 | FC3, ME2 | 26d |
| FI3 |  | Level 3: finishes & joinery | 5d | 2027-07-08 | 2027-07-13 | ME3, FI2 | 26d |
| ME4 |  | Level 4: MEP first & second fix | 5d | 2027-07-09 | 2027-07-14 | FC4, ME3 | 25d |
| FI4 |  | Level 4: finishes & joinery | 5d | 2027-07-15 | 2027-07-20 | ME4, FI3 | 25d |
| ME5 |  | Level 5: MEP first & second fix | 5d | 2027-07-16 | 2027-07-21 | FC5, ME4 | 24d |
| FI5 |  | Level 5: finishes & joinery | 5d | 2027-07-22 | 2027-07-27 | ME5, FI4 | 24d |
| ME6 |  | Level 6: MEP first & second fix | 5d | 2027-07-23 | 2027-07-28 | FC6, ME5 | 23d |
| FI6 |  | Level 6: finishes & joinery | 5d | 2027-07-29 | 2027-08-03 | ME6, FI5 | 23d |
| ME7 |  | Level 7: MEP first & second fix | 5d | 2027-07-30 | 2027-08-04 | FC7, ME6 | 22d |
| FI7 |  | Level 7: finishes & joinery | 5d | 2027-08-05 | 2027-08-10 | ME7, FI6 | 22d |
| ME8 |  | Level 8: MEP first & second fix | 5d | 2027-08-06 | 2027-08-11 | FC8, ME7 | 21d |
| FI8 |  | Level 8: finishes & joinery | 5d | 2027-08-12 | 2027-08-17 | ME8, FI7 | 21d |
| ME9 |  | Level 9: MEP first & second fix | 5d | 2027-08-13 | 2027-08-18 | FC9, ME8 | 20d |
| FI9 |  | Level 9: finishes & joinery | 5d | 2027-08-19 | 2027-08-24 | ME9, FI8 | 20d |

| ID | WBS | Task | Duration | Start | Finish | Predecessors | Total float |
| --- | --- | --- | --- | --- | --- | --- | --- |
| ME10 |  | Level 10: MEP first & second fix | 5d | 2027-08-20 | 2027-08-25 | FC10, ME9 | 19d |
| FI10 |  | Level 10: finishes & joinery | 5d | 2027-08-26 | 2027-08-31 | ME10, FI9 | 19d |
| ME11 |  | Level 11: MEP first & second fix | 5d | 2027-08-27 | 2027-09-01 | FC11, ME10 | 18d |
| FI11 |  | Level 11: finishes & joinery | 5d | 2027-09-02 | 2027-09-07 | ME11, FI10 | 18d |
| ME12 |  | Level 12: MEP first & second fix | 5d | 2027-09-03 | 2027-09-08 | FC12, ME11 | 17d |
| FI12 |  | Level 12: finishes & joinery | 5d | 2027-09-09 | 2027-09-14 | ME12, FI11 | 17d |
| ME13 |  | Level 13: MEP first & second fix | 5d | 2027-09-10 | 2027-09-15 | FC13, ME12 | 16d |
| FI13 |  | Level 13: finishes & joinery | 5d | 2027-09-16 | 2027-09-21 | ME13, FI12 | 16d |
| ME14 |  | Level 14: MEP first & second fix | 5d | 2027-09-17 | 2027-09-22 | FC14, ME13 | 15d |
| FI14 |  | Level 14: finishes & joinery | 5d | 2027-09-23 | 2027-09-28 | ME14, FI13 | 15d |
| ME15 |  | Level 15: MEP first & second fix | 5d | 2027-09-24 | 2027-09-29 | FC15, ME14 | 14d |
| FI15 |  | Level 15: finishes & joinery | 5d | 2027-09-30 | 2027-10-05 | ME15, FI14 | 14d |
| ME16 |  | Level 16: MEP first & second fix | 5d | 2027-10-01 | 2027-10-06 | FC16, ME15 | 13d |
| FI16 |  | Level 16: finishes & joinery | 5d | 2027-10-07 | 2027-10-12 | ME16, FI15 | 13d |
| ME17 |  | Level 17: MEP first & second fix | 5d | 2027-10-08 | 2027-10-13 | FC17, ME16 | 12d |
| FI17 |  | Level 17: finishes & joinery | 5d | 2027-10-14 | 2027-10-19 | ME17, FI16 | 12d |
| ME18 |  | Level 18: MEP first & second fix | 5d | 2027-10-15 | 2027-10-20 | FC18, ME17 | 11d |
| FI18 |  | Level 18: finishes & joinery | 5d | 2027-10-21 | 2027-10-26 | ME18, FI17 | 11d |
| ME19 |  | Level 19: MEP first & second fix | 5d | 2027-10-22 | 2027-10-27 | FC19, ME18 | 10d |
| FI19 |  | Level 19: finishes & joinery | 5d | 2027-10-28 | 2027-11-02 | ME19, FI18 | 10d |
| ME20 |  | Level 20: MEP first & second fix | 5d | 2027-10-29 | 2027-11-03 | FC20, ME19 | 9d |
| FI20 |  | Level 20: finishes & joinery | 5d | 2027-11-04 | 2027-11-09 | ME20, FI19 | 9d |
| ME21 |  | Level 21: MEP first & second fix | 5d | 2027-11-05 | 2027-11-10 | FC21, ME20 | 8d |
| FI21 |  | Level 21: finishes & joinery | 5d | 2027-11-11 | 2027-11-16 | ME21, FI20 | 8d |
| ME22 |  | Level 22: MEP first & second fix | 5d | 2027-11-12 | 2027-11-17 | FC22, ME21 | 7d |
| FI22 |  | Level 22: finishes & joinery | 5d | 2027-11-18 | 2027-11-23 | ME22, FI21 | 7d |
| ME23 |  | Level 23: MEP first & second fix | 5d | 2027-11-19 | 2027-11-24 | FC23, ME22 | 6d |
| FI23 |  | Level 23: finishes & joinery | 5d | 2027-11-25 | 2027-11-30 | ME23, FI22 | 6d |
| ME24 |  | Level 24: MEP first & second fix | 5d | 2027-11-26 | 2027-12-01 | FC24, ME23 | 5d |
| FI24 |  | Level 24: finishes & joinery | 5d | 2027-12-02 | 2027-12-07 | ME24, FI23 | 5d |
| ME25 |  | Level 25: MEP first & second fix | 5d | 2027-12-03 | 2027-12-08 | FC25, ME24 | 4d |
| FI25 |  | Level 25: finishes & joinery | 5d | 2027-12-09 | 2027-12-14 | ME25, FI24 | 4d |
| ME26 |  | Level 26: MEP first & second fix | 5d | 2027-12-10 | 2027-12-15 | FC26, ME25 | 3d |
| FI26 |  | Level 26: finishes & joinery | 5d | 2027-12-16 | 2027-12-21 | ME26, FI25 | 3d |
| ME27 |  | Level 27: MEP first & second fix | 5d | 2027-12-17 | 2027-12-22 | FC27, ME26 | 2d |
| FI27 |  | Level 27: finishes & joinery | 5d | 2027-12-23 | 2027-12-28 | ME27, FI26 | 2d |
| ME28 |  | Level 28: MEP first & second fix | 5d | 2027-12-24 | 2027-12-29 | FC28, ME27 | 1d |
| FI28 |  | Level 28: finishes & joinery | 5d | 2027-12-30 | 2028-01-04 | ME28, FI27 | 1d |
| ME29 |  | Level 29: MEP first & second fix | 5d | 2027-12-31 | 2028-01-05 | FC29, ME28 | 0d |
| FI29 |  | Level 29: finishes & joinery | 5d | 2028-01-06 | 2028-01-11 | ME29, FI28 | 0d |
| ME30 |  | Level 30: MEP first & second fix | 5d | 2028-01-06 | 2028-01-11 | FC30, ME29 | 0d |
| FI30 |  | Level 30: finishes & joinery | 5d | 2028-01-12 | 2028-01-17 | ME30, FI29 | 0d |
| ME31 |  | Level 31: MEP first & second fix | 5d | 2028-01-12 | 2028-01-17 | FC31, ME30 | 0d |
| FI31 |  | Level 31: finishes & joinery | 5d | 2028-01-18 | 2028-01-22 | ME31, FI30 | 0d |
| ME32 |  | Level 32: MEP first & second fix | 5d | 2028-01-18 | 2028-01-22 | FC32, ME31 | 0d |
| FI32 |  | Level 32: finishes & joinery | 5d | 2028-01-24 | 2028-01-28 | ME32, FI31 | 0d |
| ME33 |  | Level 33: MEP first & second fix | 5d | 2028-01-24 | 2028-01-28 | FC33, ME32 | 0d |
| FI33 |  | Level 33: finishes & joinery | 5d | 2028-01-29 | 2028-02-03 | ME33, FI32 | 0d |
| ME34 |  | Level 34: MEP first & second fix | 5d | 2028-01-29 | 2028-02-03 | FC34, ME33 | 0d |
| FI34 |  | Level 34: finishes & joinery | 5d | 2028-02-04 | 2028-02-09 | ME34, FI33 | 0d |
| ME35 |  | Level 35: MEP first & second fix | 5d | 2028-02-04 | 2028-02-09 | FC35, ME34 | 0d |
| FI35 |  | Level 35: finishes & joinery | 5d | 2028-02-10 | 2028-02-15 | ME35, FI34 | 0d |
|  | 07 | **Close-out** |  | 2028-02-16 | 2028-04-01 |  |  |
| TC100 |  | Testing, commissioning & authority inspections | 40d | 2028-02-16 | 2028-04-01 | FI35, SL35 | 0d |

## Version 2 (data date 2027-01-04, saved 2026-11-17)

Last finish stays 2028-04-01.

Changed:

| ID | Task | Other |
| --- | --- | --- |
| FI1 | Level 1: partitions, finishes & joinery | was named Level 1: finishes & joinery |
| FI2 | Level 2: partitions, finishes & joinery | was named Level 2: finishes & joinery |
| FI3 | Level 3: partitions, finishes & joinery | was named Level 3: finishes & joinery |
| FI4 | Level 4: partitions, finishes & joinery | was named Level 4: finishes & joinery |
| FI5 | Level 5: partitions, finishes & joinery | was named Level 5: finishes & joinery |
| FI6 | Level 6: partitions, finishes & joinery | was named Level 6: finishes & joinery |
| FI7 | Level 7: partitions, finishes & joinery | was named Level 7: finishes & joinery |
| FI8 | Level 8: partitions, finishes & joinery | was named Level 8: finishes & joinery |
| FI9 | Level 9: partitions, finishes & joinery | was named Level 9: finishes & joinery |
| FI10 | Level 10: partitions, finishes & joinery | was named Level 10: finishes & joinery |
| FI11 | Level 11: partitions, finishes & joinery | was named Level 11: finishes & joinery |
| FI12 | Level 12: partitions, finishes & joinery | was named Level 12: finishes & joinery |
| FI13 | Level 13: partitions, finishes & joinery | was named Level 13: finishes & joinery |
| FI14 | Level 14: partitions, finishes & joinery | was named Level 14: finishes & joinery |
| FI15 | Level 15: partitions, finishes & joinery | was named Level 15: finishes & joinery |
| FI16 | Level 16: partitions, finishes & joinery | was named Level 16: finishes & joinery |
| FI17 | Level 17: partitions, finishes & joinery | was named Level 17: finishes & joinery |
| FI18 | Level 18: partitions, finishes & joinery | was named Level 18: finishes & joinery |
| FI19 | Level 19: partitions, finishes & joinery | was named Level 19: finishes & joinery |
| FI20 | Level 20: partitions, finishes & joinery | was named Level 20: finishes & joinery |
| FI21 | Level 21: partitions, finishes & joinery | was named Level 21: finishes & joinery |
| FI22 | Level 22: partitions, finishes & joinery | was named Level 22: finishes & joinery |
| FI23 | Level 23: partitions, finishes & joinery | was named Level 23: finishes & joinery |
| FI24 | Level 24: partitions, finishes & joinery | was named Level 24: finishes & joinery |
| FI25 | Level 25: partitions, finishes & joinery | was named Level 25: finishes & joinery |
| FI26 | Level 26: partitions, finishes & joinery | was named Level 26: finishes & joinery |
| FI27 | Level 27: partitions, finishes & joinery | was named Level 27: finishes & joinery |
| FI28 | Level 28: partitions, finishes & joinery | was named Level 28: finishes & joinery |
| FI29 | Level 29: partitions, finishes & joinery | was named Level 29: finishes & joinery |
| FI30 | Level 30: partitions, finishes & joinery | was named Level 30: finishes & joinery |
| FI31 | Level 31: partitions, finishes & joinery | was named Level 31: finishes & joinery |
| FI32 | Level 32: partitions, finishes & joinery | was named Level 32: finishes & joinery |
| FI33 | Level 33: partitions, finishes & joinery | was named Level 33: finishes & joinery |
| FI34 | Level 34: partitions, finishes & joinery | was named Level 34: finishes & joinery |
| FI35 | Level 35: partitions, finishes & joinery | was named Level 35: finishes & joinery |
