# Arterial Road Resurfacing Program

How a schedule from Primavera P6 changed from version to version. A marks actual dates.

## Version 1 (data date 2027-04-05, saved 2026-11-17)

| ID | WBS | Task | Duration | Start | Finish | Predecessors | Total float |
| --- | --- | --- | --- | --- | --- | --- | --- |
|  | 01 | **Milestones** |  | 2027-04-05 | 2027-06-16 |  |  |
| MS000 |  | Notice to Proceed | 0d | 2027-04-05 | 2027-04-05 |  | 0d |
| MS999 |  | All sections reopened | 0d | 2027-06-16 | 2027-06-16 | L6S, L1S, L2S, L3S, L4S, L5S | 0d |
|  | 02 | **Preconstruction** |  | 2027-04-05 | 2027-04-30 |  |  |
| EN100 |  | Traffic management plans & permits | 20d | 2027-04-05 | 2027-04-30 | MS000 | 0d |
| EN110 |  | Utility adjustments survey & mix design | 15d | 2027-04-05 | 2027-04-23 | MS000 | 5d |
|  | 03 | **Section 1** |  | 2027-05-03 | 2027-05-19 |  |  |
| L1T |  | Section 1: lane closures & traffic control set-up | 1d | 2027-05-03 | 2027-05-03 | EN100, EN110 | 0d |
| L1M |  | Section 1: mill existing surface | 3d | 2027-05-04 | 2027-05-06 | L1T | 0d |
| L1MM |  | Section 1: milled surface exposed | 0d | 2027-05-06 | 2027-05-06 | L1M | 29d |
| L1B |  | Section 1: base repairs & utility adjustments | 4d | 2027-05-07 | 2027-05-12 | L1M | 5d |
| L1P |  | Section 1: pave binder & surface course | 3d | 2027-05-13 | 2027-05-17 | L1B | 5d |
| L1S |  | Section 1: permanent striping & reopen | 2d | 2027-05-18 | 2027-05-19 | L1P | 20d |
|  | 04 | **Section 2** |  | 2027-05-07 | 2027-05-25 |  |  |
| L2T |  | Section 2: lane closures & traffic control set-up | 1d | 2027-05-07 | 2027-05-07 | EN100, EN110, L1M | 0d |
| L2M |  | Section 2: mill existing surface | 3d | 2027-05-10 | 2027-05-12 | L2T | 0d |
| L2MM |  | Section 2: milled surface exposed | 0d | 2027-05-12 | 2027-05-12 | L2M | 25d |
| L2B |  | Section 2: base repairs & utility adjustments | 4d | 2027-05-13 | 2027-05-18 | L2M | 4d |
| L2P |  | Section 2: pave binder & surface course | 3d | 2027-05-19 | 2027-05-21 | L2B, L1P | 4d |
| L2S |  | Section 2: permanent striping & reopen | 2d | 2027-05-24 | 2027-05-25 | L2P | 16d |
|  | 05 | **Section 3** |  | 2027-05-13 | 2027-05-31 |  |  |
| L3T |  | Section 3: lane closures & traffic control set-up | 1d | 2027-05-13 | 2027-05-13 | EN100, EN110, L2M | 0d |
| L3M |  | Section 3: mill existing surface | 3d | 2027-05-14 | 2027-05-18 | L3T | 0d |
| L3MM |  | Section 3: milled surface exposed | 0d | 2027-05-18 | 2027-05-18 | L3M | 21d |
| L3B |  | Section 3: base repairs & utility adjustments | 4d | 2027-05-19 | 2027-05-24 | L3M | 3d |
| L3P |  | Section 3: pave binder & surface course | 3d | 2027-05-25 | 2027-05-27 | L3B, L2P | 3d |
| L3S |  | Section 3: permanent striping & reopen | 2d | 2027-05-28 | 2027-05-31 | L3P | 12d |
|  | 06 | **Section 4** |  | 2027-05-19 | 2027-06-04 |  |  |
| L4T |  | Section 4: lane closures & traffic control set-up | 1d | 2027-05-19 | 2027-05-19 | EN100, EN110, L3M | 0d |
| L4M |  | Section 4: mill existing surface | 3d | 2027-05-20 | 2027-05-24 | L4T | 0d |
| L4MM |  | Section 4: milled surface exposed | 0d | 2027-05-24 | 2027-05-24 | L4M | 17d |
| L4B |  | Section 4: base repairs & utility adjustments | 4d | 2027-05-25 | 2027-05-28 | L4M | 2d |
| L4P |  | Section 4: pave binder & surface course | 3d | 2027-05-31 | 2027-06-02 | L4B, L3P | 2d |
| L4S |  | Section 4: permanent striping & reopen | 2d | 2027-06-03 | 2027-06-04 | L4P | 8d |
|  | 07 | **Section 5** |  | 2027-05-25 | 2027-06-10 |  |  |
| L5T |  | Section 5: lane closures & traffic control set-up | 1d | 2027-05-25 | 2027-05-25 | EN100, EN110, L4M | 0d |
| L5M |  | Section 5: mill existing surface | 3d | 2027-05-26 | 2027-05-28 | L5T | 0d |
| L5MM |  | Section 5: milled surface exposed | 0d | 2027-05-28 | 2027-05-28 | L5M | 13d |
| L5B |  | Section 5: base repairs & utility adjustments | 4d | 2027-05-31 | 2027-06-03 | L5M | 1d |
| L5P |  | Section 5: pave binder & surface course | 3d | 2027-06-04 | 2027-06-08 | L5B, L4P | 1d |
| L5S |  | Section 5: permanent striping & reopen | 2d | 2027-06-09 | 2027-06-10 | L5P | 4d |
|  | 08 | **Section 6** |  | 2027-05-31 | 2027-06-16 |  |  |
| L6T |  | Section 6: lane closures & traffic control set-up | 1d | 2027-05-31 | 2027-05-31 | EN100, EN110, L5M | 0d |
| L6M |  | Section 6: mill existing surface | 3d | 2027-06-01 | 2027-06-03 | L6T | 0d |
| L6MM |  | Section 6: milled surface exposed | 0d | 2027-06-03 | 2027-06-03 | L6M | 9d |
| L6B |  | Section 6: base repairs & utility adjustments | 4d | 2027-06-04 | 2027-06-09 | L6M | 0d |
| L6P |  | Section 6: pave binder & surface course | 3d | 2027-06-10 | 2027-06-14 | L6B, L5P | 0d |
| L6S |  | Section 6: permanent striping & reopen | 2d | 2027-06-15 | 2027-06-16 | L6P | 0d |

## Version 2 (data date 2027-04-05, saved 2026-11-17)

Last finish 2027-06-16 → 2027-06-17 (+1d).

Added:

| ID | Task | Duration | Start | Finish | Predecessors |
| --- | --- | --- | --- | --- | --- |
| L1R | Section 1: remove traffic control & reopen | 1d | 2027-05-20 | 2027-05-20 | L1S |
| L2R | Section 2: remove traffic control & reopen | 1d | 2027-05-26 | 2027-05-26 | L2S |
| L3R | Section 3: remove traffic control & reopen | 1d | 2027-06-01 | 2027-06-01 | L3S |
| L4R | Section 4: remove traffic control & reopen | 1d | 2027-06-07 | 2027-06-07 | L4S |
| L5R | Section 5: remove traffic control & reopen | 1d | 2027-06-11 | 2027-06-11 | L5S |
| L6R | Section 6: remove traffic control & reopen | 1d | 2027-06-17 | 2027-06-17 | L6S |

Changed:

| ID | Task | Start | Finish | Predecessors | Other |
| --- | --- | --- | --- | --- | --- |
| 01 | **Milestones** |  | 2027-06-16 → 2027-06-17 (+1d) |  |  |
| MS999 | All sections reopened | 2027-06-16 → 2027-06-17 (+1d) | 2027-06-16 → 2027-06-17 (+1d) | L6S, L1S, L2S, L3S, L4S, L5S → L1R, L2R, L3R, L4R, L5R, L6R |  |
| 03 | **Section 1** |  | 2027-05-19 → 2027-05-20 (+1d) |  |  |
| L1S | Section 1: permanent striping |  |  |  | was named Section 1: permanent striping & reopen |
| 04 | **Section 2** |  | 2027-05-25 → 2027-05-26 (+1d) |  |  |
| L2S | Section 2: permanent striping |  |  |  | was named Section 2: permanent striping & reopen |
| 05 | **Section 3** |  | 2027-05-31 → 2027-06-01 (+1d) |  |  |
| L3S | Section 3: permanent striping |  |  |  | was named Section 3: permanent striping & reopen |
| 06 | **Section 4** |  | 2027-06-04 → 2027-06-07 (+3d) |  |  |
| L4S | Section 4: permanent striping |  |  |  | was named Section 4: permanent striping & reopen |
| 07 | **Section 5** |  | 2027-06-10 → 2027-06-11 (+1d) |  |  |
| L5S | Section 5: permanent striping |  |  |  | was named Section 5: permanent striping & reopen |
| 08 | **Section 6** |  | 2027-06-16 → 2027-06-17 (+1d) |  |  |
| L6S | Section 6: permanent striping |  |  |  | was named Section 6: permanent striping & reopen |
