# 132/33 kV Substation Tie-in for a Data Center Campus

How a schedule from Primavera P6 changed from version to version. A marks actual dates.

## Version 1 (data date 2027-02-01, saved 2026-11-17)

| ID | WBS | Task | Duration | Start | Finish | Predecessors | Total float |
| --- | --- | --- | --- | --- | --- | --- | --- |
|  | 01 | **Milestones** |  | 2027-02-01 | 2028-01-07 |  |  |
| MS000 |  | Notice to Proceed | 0d | 2027-02-01 | 2027-02-01 |  | 0d |
| MS999 |  | Campus power available | 0d | 2028-01-07 | 2028-01-07 | EN200 | 0d |
|  | 02 | **Engineering & procurement** |  | 2027-02-01 | 2027-11-12 |  |  |
| EN100 |  | Protection & control design, utility approval | 45d | 2027-02-01 | 2027-04-02 | MS000 | 0d |
| PR100 |  | 90 MVA power transformers: manufacture, FAT & ship | 160d | 2027-04-05 | 2027-11-12 | EN100 | 0d |
| PR110 |  | 33 kV GIS switchgear: manufacture & deliver | 120d | 2027-04-05 | 2027-09-17 | EN100 | 45d |
|  | 03 | **Civil works** |  | 2027-02-01 | 2027-04-30 |  |  |
| CV100 |  | Site prep, fence & earthing grid | 20d | 2027-02-01 | 2027-02-26 | MS000 | 145d |
| CB100 |  | Control building: structure & fit-out | 45d | 2027-03-01 | 2027-04-30 | CV100 | 145d |
| CT100 |  | 33 kV cable trench to campus | 30d | 2027-03-01 | 2027-04-09 | CV100 | 178d |
| GF0 |  | Gantry 1: foundations | 6d | 2027-03-01 | 2027-03-08 | CV100 | 182d |
| TF0 |  | Transformer 1: foundation, bund & blast wall | 15d | 2027-03-01 | 2027-03-19 | CV100 | 165d |
| GF1 |  | Gantry 2: foundations | 6d | 2027-03-09 | 2027-03-16 | CV100, GF0 | 182d |
| GF2 |  | Gantry 3: foundations | 6d | 2027-03-17 | 2027-03-24 | CV100, GF1 | 182d |
| TF1 |  | Transformer 2: foundation, bund & blast wall | 15d | 2027-03-22 | 2027-04-09 | CV100, TF0 | 165d |
|  | 04 | **Structures & equipment** |  | 2027-03-09 | 2027-12-10 |  |  |
| GS0 |  | Gantry 1: erect steel structure | 5d | 2027-03-09 | 2027-03-15 | GF0 | 184d |
| GS1 |  | Gantry 2: erect steel structure | 5d | 2027-03-17 | 2027-03-23 | GF1, GS0 | 183d |
| GS2 |  | Gantry 3: erect steel structure | 5d | 2027-03-25 | 2027-03-31 | GF2, GS1 | 182d |
| CB110 |  | Install GIS switchgear & protection panels | 15d | 2027-09-20 | 2027-10-08 | CB100, PR110 | 45d |
| CT110 |  | Pull & terminate 33 kV cables | 12d | 2027-10-11 | 2027-10-26 | CT100, CB110 | 48d |
| TX0 |  | Transformer 1: set, dress & oil fill | 10d | 2027-11-15 | 2027-11-26 | TF0, PR100 | 0d |
| TX1 |  | Transformer 2: set, dress & oil fill | 10d | 2027-11-29 | 2027-12-10 | TF1, PR100, TX0 | 0d |
|  | 05 | **Testing & energization** |  | 2027-12-13 | 2028-01-07 |  |  |
| TS100 |  | Secondary injection & protection testing | 15d | 2027-12-13 | 2027-12-31 | TX1, CB110, GS2 | 0d |
| OUT |  | Utility outage window: 132 kV line tie-in | 3d | 2028-01-03 | 2028-01-05 | TS100, CT110 | 0d |
| EN200 |  | Energize transformers & 33 kV feeders | 2d | 2028-01-06 | 2028-01-07 | OUT | 0d |

## Version 2 (data date 2027-02-01, saved 2026-11-17)

Last finish stays 2028-01-07.

Changed:

| ID | Task | Other |
| --- | --- | --- |
| CV100 | Site prep, fence, stone & earthing grid | was named Site prep, fence & earthing grid |
| TX0 | Transformer 1: set, dress & oil fill; HV bay equipment | was named Transformer 1: set, dress & oil fill |
| TX1 | Transformer 2: set, dress & oil fill; HV bay equipment | was named Transformer 2: set, dress & oil fill |
